# Project C04

Schedule from MS Project, 2022-10-28 to 2023-02-14, costs in €, A marks actual dates.

## Calendars

- Standard: Mon-Fri 08:00-12:00, 13:00-17:00; Sat-Sun off. Exceptions (off unless hours are given): 2022-12-10 08:00-12:00, 13:00-17:00.
- C04: Mon-Fri 08:00-12:00, 13:00-17:00; Sat-Sun 10:00-11:00.

## Resources

| Resource | Rate |
| --- | --- |
| Benedetto Scala | 30 |
| Francesco Fattorusso | 30 |
| Francesco Maria Puca | 30 |
| Gerardo Frino | 30 |
| Maria Lombardi | 30 |

## Schedule

| ID | WBS | Task | Type | Duration | Start | Finish | Predecessors | Complete | Remaining | Actual finish | Constraint | Calendar | Work | Actual work | Cost | Baseline cost | Actual cost |
| --- | --- | --- | --- | --- | --- | --- | --- | --- | --- | --- | --- | --- | --- | --- | --- | --- | --- |
| 1 | 1 | **EnIA** |  | 82d | 2022-10-28 08:00 A | 2023-02-14 17:00 |  | 99% | 1.17d |  |  | C04 | 247.14h | 247.14h | 7,020 |  | 7,020 |
| 2 | 1.1 | Training | manual | 2d | 2022-10-28 08:00 A | 2022-10-31 17:00 A |  | 100% |  |  |  |  | 10h | 10h |  |  |  |
| 3 | 1.2 | **Requirements Elicitation and Analysis** |  | 19d | 2022-11-01 08:00 A | 2022-11-25 17:00 A |  | 100% |  |  |  |  | 48h | 48h | 1,440 | 6,510 | 1,440 |
| 4 | 1.2.1 | **Elicitation** |  | 13d | 2022-11-01 08:00 A | 2022-11-17 17:00 A |  | 100% |  |  |  |  | 19h | 19h | 570 | 3,920 | 570 |
| 5 | 1.2.1.1 | Analisi del sistema attuale |  | 0.75d | 2022-11-01 08:00 A | 2022-11-04 17:00 A |  | 100% |  |  | finish no earlier than 2022-11-04 17:00 | C04 | 4h | 4h | 120 | 560 | 120 |
| 6 | 1.2.1.2 | Identificazione degli attori |  | 0.88d | 2022-11-04 08:00 A | 2022-11-09 17:00 A |  | 100% |  |  | finish no earlier than 2022-11-09 17:00 |  | 5h | 5h | 150 | 560 | 150 |
| 7 | 1.2.1.3 | Individuazione dei Requisiti Funzionali, Requisiti non funzionali, scenari e casi d'uso |  | 4.58d | 2022-11-08 08:00 A | 2022-11-17 17:00 A | 6 | 100% |  |  | finish no earlier than 2022-11-17 17:00 |  | 10h | 10h | 300 | 560 | 300 |
| 8 | 1.2.2 | **Analysis** |  | 7d | 2022-11-17 08:00 A | 2022-11-25 17:00 | 4 | 100% |  | 2022-11-24 17:00 |  |  | 25h | 25h | 750 | 2,310 | 750 |
| 9 | 1.2.2.1 | **Costruzione del modello a oggetti** |  | 3d | 2022-11-17 08:00 A | 2022-11-21 17:00 | 4 | 100% |  | 2022-11-21 14:40 |  |  | 9h | 9h | 270 | 1,190 | 270 |
| 10 | 1.2.2.1.1 | Individuazione degli oggetti (Entity, Boundary, Control) a partire da RF, scenari e casi d'uso |  | 1d | 2022-11-17 08:00 A | 2022-11-18 15:04 A | 4 | 100% |  |  |  |  | 6h | 6h | 180 | 350 | 180 |
| 11 | 1.2.2.1.2 | Costruzione del class diagram usando gli oggetti identificati |  | 1.25d | 2022-11-18 08:00 A | 2022-11-21 14:40 A | 10 | 100% |  |  |  |  | 3h | 3h | 90 | 560 | 90 |
| 12 | 1.2.2.2 | **Costruzione del modello dinamico** |  | 3d | 2022-11-22 08:00 A | 2022-11-24 17:00 A | 9 | 100% |  |  |  |  | 16h | 16h | 480 | 1,120 | 480 |
| 13 | 1.2.2.2.1 | Costruzione dei Sequence Diagrams |  | 2d | 2022-11-22 08:00 A | 2022-11-23 17:00 A |  | 100% |  |  |  |  | 6h | 6h | 180 | 560 | 180 |
| 14 | 1.2.2.2.2 | Costruzione degli state chart diagrams |  | 1d | 2022-11-22 08:00 A | 2022-11-22 17:00 A |  | 100% |  |  |  |  | 2h | 2h | 60 | 140 | 60 |
| 15 | 1.2.2.2.3 | Costruzione dei Navigational Paths |  | 1d | 2022-11-24 08:00 A | 2022-11-24 17:00 A | 13 | 100% |  |  |  |  | 2h | 2h | 60 | 140 | 60 |
| 16 | 1.2.2.2.4 | Costruzione dei mockups |  | 2d | 2022-11-23 08:00 A | 2022-11-24 17:00 A |  | 100% |  |  | finish no earlier than 2022-11-24 17:00 |  | 6h | 6h | 180 | 280 | 180 |
| 17 | 1.2.3 | Stesura e revisione del RAD( Requirements Analysis Document) |  | 3d | 2022-11-23 08:00 A | 2022-11-25 17:00 A |  | 100% |  |  |  |  | 4h | 4h | 120 | 280 | 120 |
| 18 | 1.3 | **System Design** |  | 9d | 2022-11-25 08:00 A | 2022-12-07 17:00 A | 3 | 100% |  |  |  |  | 30h | 30h | 900 | 2,590 | 900 |
| 19 | 1.3.1 | **Identificare gli obiettivi di design** |  | 1d | 2022-11-25 08:00 A | 2022-11-25 17:00 |  | 100% |  | 2022-11-25 16:00 |  |  | 5h | 5h | 150 | 420 | 150 |
| 20 | 1.3.1.1 | Identificazione dei design goals |  | 0.38d | 2022-11-25 08:00 A | 2022-11-25 11:00 A |  | 100% |  |  |  |  | 3h | 3h | 90 | 280 | 90 |
| 21 | 1.3.1.2 | Identificare i trade-offs design goal |  | 0.5d | 2022-11-25 11:00 A | 2022-11-25 16:00 A | 20 | 100% |  |  |  |  | 2h | 2h | 60 | 140 | 60 |
| 22 | 1.3.2 | **Individuare la decomposizione in sottosistemi** |  | 2d | 2022-11-25 08:00 A | 2022-11-28 17:00 A | 19 | 100% |  |  |  |  | 7h | 7h | 210 | 420 | 210 |
| 23 | 1.3.2.1 | Scelta dell'architettura del sistema e divisione in layers |  | 1d | 2022-11-25 08:00 A | 2022-11-25 17:00 A |  | 100% |  |  |  |  | 2h | 2h | 60 | 140 | 60 |
| 24 | 1.3.2.2 | Divisione del sistema in sottosistemi |  | 1d | 2022-11-28 08:00 A | 2022-11-28 17:00 A | 23 | 100% |  |  | finish no earlier than 2022-11-28 17:00 |  | 5h | 5h | 150 | 280 | 150 |

| ID | WBS | Task | Type | Duration | Start | Finish | Predecessors | Complete | Actual finish | Total slack | Constraint | Work | Actual work | Cost | Baseline cost | Actual cost |
| --- | --- | --- | --- | --- | --- | --- | --- | --- | --- | --- | --- | --- | --- | --- | --- | --- |
| 25 | 1.3.3 | **Rifinire la decomposizione per soddisfare gli obiettivi di design** |  | 6d | 2022-11-28 08:00 A | 2022-12-05 17:00 | 22 | 100% | 2022-11-29 16:00 |  |  | 15h | 15h | 450 | 1,470 | 450 |
| 26 | 1.3.3.1 | Mappare i sottosistemi su un hardware |  | 1.04d | 2022-11-28 08:00 A | 2022-11-29 08:20 A |  | 100% |  |  |  | 1h | 1h | 30 | 70 | 30 |
| 27 | 1.3.3.2 | **Specifica dei dati persistenti** |  | 3d | 2022-11-28 08:00 A | 2022-11-30 17:00 |  | 100% | 2022-11-29 16:00 |  |  | 9h | 9h | 270 | 840 | 270 |
| 28 | 1.3.3.2.1 | Identificare gli oggetti persistenti |  | 0.75d | 2022-11-28 08:00 A | 2022-11-28 15:00 A |  | 100% |  |  |  | 3h | 3h | 90 | 280 | 90 |
| 29 | 1.3.3.2.2 | Costruzione dello schema dei dati persistenti |  | 0.75d | 2022-11-28 15:00 A | 2022-11-29 12:00 A | 28 | 100% |  |  |  | 3h | 3h | 90 | 280 | 90 |
| 30 | 1.3.3.2.3 | Costruzione del Dizionario dei Dati |  | 0.38d | 2022-11-29 13:00 A | 2022-11-29 16:00 A | 29 | 100% |  |  |  | 3h | 3h | 90 | 280 | 90 |
| 31 | 1.3.3.3 | Definire la matrice per il controllo degli accessi |  | 0.5d | 2022-11-28 08:00 A | 2022-11-28 12:00 A |  | 100% |  |  |  | 1h | 1h | 30 | 70 | 30 |
| 32 | 1.3.3.4 | Definire il Flusso di Controllo Globale del sistema |  | 0.5d | 2022-11-28 13:00 A | 2022-11-28 17:00 A | 31 | 100% |  |  |  | 1h | 1h | 30 | 70 | 30 |
| 33 | 1.3.3.5 | Identificare i servizi per ogni sottosistema |  | 0.75d | 2022-11-29 08:00 A | 2022-11-29 15:00 A | 32 | 100% |  |  |  | 3h | 3h | 90 | 280 | 90 |
| 34 | 1.3.4 | Stesura e revisione dello SDD (System Design Document) |  | 2d | 2022-12-06 08:00 A | 2022-12-07 17:00 A | 25 | 100% |  |  |  | 3h | 3h | 90 | 280 | 90 |
| 35 | 1.4 | **System Test Design** |  | 4d | 2022-12-07 08:00 A | 2022-12-10 17:00 A | 18 | 100% |  |  |  | 19h | 19h | 600 | 1,120 | 600 |
| 36 | 1.4.1 | Identificazione dei casi di test funzionali tramite category partition |  | 2d | 2022-12-07 08:00 A | 2022-12-08 17:00 A |  | 100% |  |  |  | 8h | 8h | 240 | 560 | 240 |
| 37 | 1.4.2 | Scrittura dei casi di test |  | 2d | 2022-12-09 08:00 A | 2022-12-10 17:00 A | 36 | 100% |  |  | finish no earlier than 2022-12-10 17:00 | 8h | 8h | 270 | 560 | 270 |
| 38 | 1.4.3 | Test plan e Test Case Specification Document |  | 0.25d | 2022-12-09 08:00 A | 2022-12-09 10:00 A |  | 100% |  |  | start no earlier than 2022-12-09 08:00 | 3h | 3h | 90 |  | 90 |
| 39 | 1.5 | Revisione Finale RAD, SDD, STD | manual | 3d | 2022-12-09 08:00 A | 2022-12-12 17:00 A |  | 100% |  |  |  | 2h | 2h | 60 |  | 60 |
| 40 | 1.6 | Consegna intermedia |  | 1d | 2022-12-13 08:00 | 2022-12-13 17:00 | 3, 18, 35 |  |  | 45d | start no earlier than 2022-12-13 08:00 |  |  |  |  |  |
| 41 | 1.7 | **Object Design** |  | 4.4d | 2022-12-23 08:00 A | 2022-12-29 11:12 A | 40 | 100% |  |  |  | 24h | 24h | 810 | 1,820 | 810 |
| 42 | 1.7.1 | **Riuso** |  | 4d | 2022-12-23 08:00 A | 2022-12-28 17:00 |  | 100% | 2022-12-27 14:00 |  |  | 5h | 5h | 150 | 420 | 150 |
| 43 | 1.7.1.1 | Identificazione e integrazione di componenti COTS |  | 1d | 2022-12-23 08:00 A | 2022-12-23 17:00 A |  | 100% |  |  | start no earlier than 2022-12-23 08:00 | 1h | 1h | 30 | 140 | 30 |
| 44 | 1.7.1.2 | Identificazione e integrazione di Design Patterns utili |  | 1.62d | 2022-12-26 08:00 A | 2022-12-27 14:00 A | 43 | 100% |  |  |  | 4h | 4h | 120 | 280 | 120 |
| 45 | 1.7.2 | **Specifica delle interfacce** |  | 2d | 2022-12-27 08:00 A | 2022-12-28 17:00 A |  | 100% |  |  |  | 16h | 16h | 480 | 1,120 | 480 |
| 46 | 1.7.2.1 | Identificazione dei packages a partire dai sottosistemi |  | 0.4d | 2022-12-27 08:00 A | 2022-12-27 11:12 A |  | 100% |  |  |  | 1h | 1h | 30 | 70 | 30 |
| 47 | 1.7.2.2 | Identificazione delle classi per ogni package |  | 0.4d | 2022-12-27 11:12 A | 2022-12-27 15:24 A | 46 | 100% |  |  |  | 1h | 1h | 30 | 70 | 30 |
| 48 | 1.7.2.3 | Specifica degli attributi e delle signatures dei metodi |  | 0.5d | 2022-12-27 15:24 A | 2022-12-28 10:24 A | 47 | 100% |  |  |  | 10h | 10h | 300 | 560 | 300 |
| 49 | 1.7.2.4 | Specifica dei vincoli: invarianti, precondizioni e postcondizioni |  | 0.25d | 2022-12-28 10:24 A | 2022-12-28 13:24 A | 48 | 100% |  |  |  | 2h | 2h | 60 | 280 | 60 |
| 50 | 1.7.2.5 | Specifica delle eccezioni |  | 0.3d | 2022-12-28 14:36 A | 2022-12-28 17:00 A |  | 100% |  |  | finish no earlier than 2022-12-28 17:00 | 2h | 2h | 60 | 140 | 60 |
| 51 | 1.7.3 | Scrittura e revisione dello ODD (Object Design Document) | manual | 0.4d | 2022-12-29 08:00 A | 2022-12-29 11:12 A | 42, 45 | 100% |  |  |  | 3h | 3h | 180 | 280 | 180 |

| ID | WBS | Task | Type | Duration | Start | Finish | Predecessors | Complete | Actual finish | Constraint | Work | Actual work | Cost | Baseline cost | Actual cost |
| --- | --- | --- | --- | --- | --- | --- | --- | --- | --- | --- | --- | --- | --- | --- | --- |
| 52 | 1.8 | **System Implementation** |  | 22d | 2023-01-02 08:00 A | 2023-01-31 17:00 A | 41 | 100% |  |  | 93.14h | 93.14h | 2,580 | 9,100 | 2,580 |
| 53 | 1.8.1 | Setup dell'ambiente di lavoro |  | 1d | 2023-01-02 08:00 A | 2023-01-02 17:00 A |  | 100% |  |  | 3h | 3h | 90 | 140 | 90 |
| 54 | 1.8.2 | Sprint 1 |  | 6d | 2023-01-03 08:00 A | 2023-01-10 17:00 A | 53 | 100% |  |  | 10.14h | 10.14h | 90 | 280 | 90 |
| 55 | 1.8.3 | Sprint 2 |  | 6d | 2023-01-10 08:00 A | 2023-01-17 17:00 A | 54 | 100% |  |  | 60h | 60h | 1,800 | 5,600 | 1,800 |
| 56 | 1.8.4 | Sprint 3 | manual | 6d | 2023-01-17 08:00 A | 2023-01-24 17:00 A |  | 100% |  |  |  |  |  |  |  |
| 57 | 1.8.5 | Sprint 4 |  | 6d | 2023-01-24 08:00 A | 2023-01-31 17:00 A | 56 | 100% |  | start no earlier than 2023-01-24 08:00 | 20h | 20h | 600 | 2,800 | 600 |
| 58 | 1.9 | **Testing** |  | 2d | 2023-02-01 08:00 A | 2023-02-02 17:00 | 55 | 100% | 2023-02-01 14:00 |  | 21h | 21h | 630 | 1,680 | 630 |
| 59 | 1.9.1 | Esecuzione dei test di unità |  | 0.5d | 2023-02-01 08:00 A | 2023-02-01 12:00 A | 57 | 100% |  |  | 10h | 10h | 300 | 560 | 300 |
| 60 | 1.9.2 | Esecuzione dei test di sistema |  | 0.5d | 2023-02-01 08:00 A | 2023-02-01 12:00 A | 52 | 100% |  |  | 10h | 10h | 300 | 560 | 300 |
| 61 | 1.9.3 | Test Incident Report e Test Summary Report |  | 0.12d | 2023-02-01 13:00 A | 2023-02-01 14:00 A | 59, 60 | 100% |  |  | 1h | 1h | 30 |  | 30 |
| 62 | 1.10 | Consegna finale | manual | 2d | 2023-02-08 08:00 A | 2023-02-09 17:00 A | 41, 52, 58 | 100% |  | start no earlier than 2023-02-08 08:00 |  |  |  |  |  |
